# PT MIG GWY [518401] v1 - copia

Schedule from MS Project XML, 2025-09-01 to 2026-01-20, A marks actual dates.
Telcel

## Calendars

- Estándar: Mon-Fri 09:00-13:00, 15:00-19:00; Sat-Sun off. Exceptions (off unless hours are given): 2025-09-16 (Dia de la independencia), 2025-11-17 (Día de la revolución), 2025-12-25 (navidad), 2026-01-01 (Año nuevo).

## Resources

| Resource |
| --- |
| Sheyla |
| Telcel |
| Ulises Santiago |
| Miguel Angel Ramirez |
| David Hernandez |

## Schedule

| ID | WBS | Task | Duration | Start | Finish | Predecessors | Complete | Resources | Work | Actual work | %planeado | %retraso | %Completado/numero | %Planeado/numero | Text1 |
| --- | --- | --- | --- | --- | --- | --- | --- | --- | --- | --- | --- | --- | --- | --- | --- |
| 1 | 1 | **570950 / CORE SERVICIOS MI TELCEL SVA CAPA NEGOCIO CAMBIO DE BASE DE DATOS ORACLE A INFORMIX** | 98d | 2025-09-01 A | 2026-01-20 A |  | 100% |  | 2560h | 2560h | 100% | 0% | 1 | 1 |  |
| 2 | 1.1 | PLANEACIÓN PREVIA | 2d | 2025-09-01 A | 2025-09-02 A |  | 100% | Telcel | 16h | 16h | 100% | 0% | 1 | 1 |  |
| 3 | 1.2 | **Tarea Modificada por Ulises** | 10d | 2025-09-01 A | 2025-09-12 A | 2SS | 50% | Sheyla; Telcel; Ulises Santiago | 576h | 576h | 100% | 0% | 1 | 1 | 100% |
| 4 | 1.2.1 | **Análisis de impacto** | 5d | 2025-09-01 A | 2025-09-05 A |  | 100% | Sheyla; Telcel; Ulises Santiago | 168h | 168h | 100% | 0% | 1 | 1 | 100% |
| 5 | 1.2.1.1 | Elaboración de Análisis de Impacto | 4d | 2025-09-01 A | 2025-09-04 A |  | 100% | Ulises Santiago | 32h | 32h | 100% | 0% | 1 | 1 |  |
| 6 | 1.2.1.2 | VoBo del Análisis de Impacto | 1d | 2025-09-05 A | 2025-09-05 A | 5 | 100% | Sheyla; Telcel | 16h | 16h | 100% | 0% | 1 | 1 |  |
| 7 | 1.2.2 | **Análisis Técnico** | 5d | 2025-09-08 A | 2025-09-12 A | 6 | 100% | Ulises Santiago; Sheyla; Telcel | 168h | 168h | 100% | 0% | 1 | 1 | 100% |
| 8 | 1.2.2.1 | Elaboración de Análisis Técnico | 4d | 2025-09-08 A | 2025-09-11 A |  | 100% | Ulises Santiago | 32h | 32h | 100% | 0% | 1 | 1 | 100% |
| 9 | 1.2.2.2 | VoBo del Análisis Técnico | 1d | 2025-09-12 A | 2025-09-12 A | 8 | 100% | Sheyla; Telcel | 16h | 16h | 100% | 0% | 1 | 1 |  |
| 10 | 1.3 | **PLANEACIÓN** | 1d | 2025-09-15 A | 2025-09-15 A | 3 | 100% | Sheyla; Telcel | 32h | 32h | 100% | 0% | 1 | 1 | 100% |
| 11 | 1.3.1 | **Plan de Trabajo** | 1d | 2025-09-15 A | 2025-09-15 A |  | 100% | Sheyla | 16h | 16h | 100% | 0% | 1 | 1 | 100% |
| 12 | 1.3.1.1 | Realizar plan de trabajo | 1d | 2025-09-15 A | 2025-09-15 A |  | 100% | Telcel | 8h | 8h | 100% | 0% | 1 | 1 | 100% |
| 13 | 1.3.1.2 | VoBo del Plan de Trabajo | 1d | 2025-09-15 A | 2025-09-15 A |  | 100% |  |  |  | 100% | 0% | 1 | 1 |  |
| 14 | 1.4 | **EJECUCIÓN** | 10d | 2025-09-17 A | 2025-09-30 A | 10 | 100% | Ulises Santiago | 160h | 160h | 100% | 0% | 1 | 1 |  |
| 15 | 1.4.1 | DESARROLLO | 10d | 2025-09-17 A | 2025-09-30 A |  | 100% | Ulises Santiago | 80h | 80h | 100% | 0% | 1 | 1 | 67% |
| 16 | 1.5 | **PRUEBAS INTEGRALES, UAT** | 46d | 2025-10-01 A | 2025-12-04 A | 14 | 100% | Sheyla; Telcel; Ulises Santiago | 1504h | 1504h | 100% | 0% | 1 | 1 |  |
| 17 | 1.5.1 | **Matriz de Pruebas** | 5d | 2025-10-01 A | 2025-10-07 A |  | 100% | Ulises Santiago | 96h | 96h | 100% | 0% | 1 | 1 |  |
| 18 | 1.5.1.1 | Elaboración de Matriz de Pruebas | 3d | 2025-10-01 A | 2025-10-03 A |  | 100% | Ulises Santiago | 24h | 24h | 100% | 0% | 1 | 1 |  |
| 19 | 1.5.1.2 | VoBo matriz de pruebas | 2d | 2025-10-06 A | 2025-10-07 A |  | 100% | Sheyla; Telcel | 32h | 32h | 100% | 0% | 1 | 1 |  |
| 20 | 1.5.2 | **Preparación de Ambientes** | 2d | 2025-10-01 A | 2025-10-02 A | 17 | 100% | Sheyla; Telcel | 64h | 64h | 100% | 0% | 1 | 1 |  |
| 21 | 1.5.2.1 | Despliegue en servidor QA | 2d | 2025-10-01 A | 2025-10-02 A |  | 100% | Sheyla; Telcel | 32h | 32h | 100% | 0% | 1 | 1 |  |
| 22 | 1.5.3 | **Pruebas en QA** | 9d | 2025-10-03 A | 2025-10-15 A | 20 | 100% | Sheyla; Ulises Santiago | 240h | 240h | 100% | 0% | 1 | 1 |  |
| 23 | 1.5.3.1 | Ejecución de pruebas en ambiente QA | 6d | 2025-10-03 A | 2025-10-10 A |  | 100% | Ulises Santiago | 48h | 48h | 100% | 0% | 1 | 1 |  |
| 24 | 1.5.3.2 | Vobo de Pruebas Integrales | 3d | 2025-10-13 A | 2025-10-15 A | 23 | 100% | Sheyla; Telcel | 48h | 48h | 100% | 0% | 1 | 1 |  |

| ID | WBS | Task | Duration | Start | Finish | Predecessors | Complete | Constraint | Resources | Work | Actual work | %planeado | %retraso | %Completado/numero | %Planeado/numero |
| --- | --- | --- | --- | --- | --- | --- | --- | --- | --- | --- | --- | --- | --- | --- | --- |
| 25 | 1.5.4 | **Ejecución de CRQ en BD productiva para creación de tablas** | 35d | 2025-10-16 A | 2025-12-04 A | 22 | 100% |  |  |  |  | 100% | 0% | 1 | 1 |
| 26 | 1.5.4.1 | Solicitud de CRQ | 15d | 2025-10-16 A | 2025-11-05 A |  | 100% |  |  |  |  | 100% | 0% | 1 | 1 |
| 27 | 1.5.4.2 | ejecución de CRQ | 20d | 2025-11-06 A | 2025-12-04 A | 26 | 100% |  |  |  |  | 100% | 0% | 1 | 1 |
| 28 | 1.6 | **ACTUALIZACION DE CONEXION A BASE DE DATOS Y PRUEBAS EN AMBIENTE QA DE JDNI** | 28d | 2025-12-05 A | 2026-01-15 A |  | 100% |  |  |  |  | 100% | 0% | 1 | 1 |
| 29 | 1.6.1 | ACTUALIZACION DE CONEXION A BASE DE DATOS | 16d | 2025-12-05 A | 2025-12-29 A | 25 | 100% |  |  |  |  | 100% | 0% | 1 | 1 |
| 30 | 1.6.2 | SOLICITUD DE CONFIGURACION DEL DATASOURCE Y JDNI | 6d | 2025-12-30 A | 2026-01-07 A | 29 | 100% | start no earlier than 2025-12-05 |  |  |  | 100% | 0% | 1 | 1 |
| 31 | 1.6.3 | ACTUALIZACION DE FEATURES EN AMBIENTE QA PARTE 1 Y PARTE 2 | 3d | 2026-01-08 A | 2026-01-12 A | 30 | 100% |  |  |  |  | 100% | 0% | 1 | 1 |
| 32 | 1.6.4 | PRUEBAS DE CONFIGURACION DE JDNI EN AMBIENTE QA | 3d | 2026-01-13 A | 2026-01-15 A | 31 | 100% |  |  |  |  | 100% | 0% | 1 | 1 |
| 33 | 1.7 | **LIBERACIÓN** | 3d | 2026-01-16 A | 2026-01-20 A | 32 | 100% |  | Sheyla; Telcel; Ulises Santiago | 272h | 272h | 100% | 0% | 1 | 1 |
| 34 | 1.7.1 | **Hoja de Implementación** | 2d | 2026-01-16 A | 2026-01-19 A |  | 100% |  | Telcel; Ulises Santiago | 80h | 80h | 100% | 0% | 1 | 1 |
| 35 | 1.7.1.1 | Elaboración de H. Implementación | 2d | 2026-01-16 A | 2026-01-19 A |  | 100% |  | Telcel; Ulises Santiago | 32h | 32h | 100% | 0% | 1 | 1 |
| 36 | 1.7.1.2 | VoBo H. Implementación | 2d | 2026-01-16 A | 2026-01-19 A |  | 100% |  | Telcel | 16h | 16h | 100% | 0% | 1 | 1 |
| 37 | 1.7.2 | **Migración Productiva** | 1d | 2026-01-20 A | 2026-01-20 A | 36 | 100% |  | Sheyla; Telcel; Ulises Santiago | 120h | 120h | 100% | 0% | 1 | 1 |
| 38 | 1.7.2.1 | Despliegue en producción | 1d | 2026-01-20 A | 2026-01-20 A |  | 100% |  | Sheyla; Telcel; Ulises Santiago | 24h | 24h | 100% | 0% | 1 | 1 |
| 39 | 1.7.2.2 | **Validación productiva** | 1d | 2026-01-20 A | 2026-01-20 A |  | 100% |  | Sheyla; Telcel; Ulises Santiago | 72h | 72h | 100% | 0% | 1 | 1 |
| 40 | 1.7.2.2.1 | Ejecución de validación productiva | 1d | 2026-01-20 A | 2026-01-20 A |  | 100% |  | Sheyla; Telcel; Ulises Santiago | 24h | 24h | 100% | 0% | 1 | 1 |
| 41 | 1.7.2.2.2 | Vobo de validación productiva | 1d | 2026-01-20 A | 2026-01-20 A |  | 100% |  | Sheyla; Telcel; Ulises Santiago | 24h | 24h | 100% | 0% | 1 | 1 |
